# Zebra

Schedule from MS Project XML, 2026-04-01 to 2027-09-30.

## Calendars

- Standard: Mon-Fri as the base calendar; Sat-Sun off.

## Resources

| Resource |
| --- |
| All Workstream Leads |
| Buyer Sponsor |
| KPMG Data Architect |
| KPMG Data Engineer |
| KPMG Infrastructure Architect |
| KPMG PMO Lead |
| KPMG Project Manager |
| KPMG QA Lead |
| KPMG SAP Architect |
| KPMG SAP Build Lead |
| KPMG SAP Specialist |
| KPMG Test Specialist |
| RoboGmbH ERP Specialist |
| RoboGmbH IT Manager |

## Schedule

| ID | WBS | Task | Type | Duration | Start | Finish | Predecessors | Constraint | Resources |
| --- | --- | --- | --- | --- | --- | --- | --- | --- | --- |
| 1 | 1 | **Phase 0: Initialization** |  | 60d | 2026-04-01 | 2026-05-31 |  |  |  |
| 2 | 1.1 | **0.1 Project Setup & Governance** |  | 16d | 2026-04-01 | 2026-04-17 |  |  |  |
| 3 | 1.1.1 | Appoint Zebra Programme Leads |  | 5d | 2026-04-01 | 2026-04-06 |  | must start on 2026-04-01 | KPMG PMO Lead; KPMG Project Manager |
| 4 | 1.1.2 | Establish Steering Committee |  | 3d | 2026-04-04 | 2026-04-07 | 3 | must start on 2026-04-04 | KPMG PMO Lead |
| 5 | 1.1.3 | Define RACI and Governance Model |  | 5d | 2026-04-04 | 2026-04-09 | 3 | must start on 2026-04-04 | KPMG Project Manager; KPMG PMO Lead |
| 6 | 1.1.4 | Set Up PMO Tools and Collaboration Site |  | 8d | 2026-04-09 | 2026-04-17 | 3 | must start on 2026-04-09 | KPMG PMO Lead |
| 7 | 1.1.5 | Onboard KPMG and RoboGmbH Teams |  | 7d | 2026-04-09 | 2026-04-16 | 3 | must start on 2026-04-09 | KPMG PMO Lead; RoboGmbH IT Manager |
| 8 | 1.2 | **0.2 IT Landscape Assessment - 37 Sites** |  | 30d | 2026-04-11 | 2026-05-11 |  |  |  |
| 9 | 1.2.1 | Application Portfolio Inventory (~208 apps) |  | 12d | 2026-04-11 | 2026-04-23 | 5 | must start on 2026-04-11 | KPMG Data Architect; RoboGmbH IT Manager |
| 10 | 1.2.2 | IT Infrastructure As-Is Mapping (37 sites) |  | 15d | 2026-04-11 | 2026-04-26 | 5 | must start on 2026-04-11 | RoboGmbH IT Manager; KPMG Infrastructure Architect |
| 11 | 1.2.3 | ERP Landscape Analysis (SAP scope) |  | 15d | 2026-04-11 | 2026-04-26 | 5 | must start on 2026-04-11 | KPMG SAP Architect; RoboGmbH ERP Specialist |
| 12 | 1.2.4 | Data Ownership & Separation Rules (Draft) |  | 10d | 2026-04-21 | 2026-05-01 | 9, 11 | must start on 2026-04-21 | KPMG Data Architect |
| 13 | 1.2.5 | Contract & Licence Inventory (~208 apps) |  | 12d | 2026-04-11 | 2026-04-23 | 5 | must start on 2026-04-11 | RoboGmbH IT Manager |
| 14 | 1.2.6 | HR IT Systems & Payroll Separation (37 sites) |  | 10d | 2026-04-16 | 2026-04-26 | 5 | must start on 2026-04-16 | KPMG Data Architect |
| 15 | 1.2.7 | OT & Production IT Assessment |  | 10d | 2026-04-19 | 2026-04-29 | 5 | must start on 2026-04-19 | RoboGmbH IT Manager; KPMG Infrastructure Architect |
| 16 | 1.2.8 | Country-Specific Legal Requirements (Multi-region) |  | 8d | 2026-04-23 | 2026-05-01 | 5 | must start on 2026-04-23 | KPMG Project Manager |
| 17 | 1.3 | **0.3 Project Charter & Scope Definition** |  | 20d | 2026-05-01 | 2026-05-21 |  |  |  |
| 18 | 1.3.1 | Draft Zebra Project Charter |  | 8d | 2026-05-01 | 2026-05-09 |  | must start on 2026-05-01 | KPMG PMO Lead; KPMG Project Manager |
| 19 | 1.3.2 | Define Scope Boundaries (37 sites, 3,500+ users, 208 apps) |  | 8d | 2026-05-06 | 2026-05-14 | 10, 11 | must start on 2026-05-06 | KPMG Project Manager; KPMG SAP Architect |
| 20 | 1.3.3 | Guiding Principles Workshop |  | 3d | 2026-05-11 | 2026-05-14 | 18, 19 | must start on 2026-05-11 | KPMG PMO Lead; All Workstream Leads |
| 21 | 1.3.4 | TSA Framework Preliminary Scope |  | 8d | 2026-05-11 | 2026-05-19 | 18, 19 | must start on 2026-05-11 | KPMG Project Manager; RoboGmbH IT Manager |
| 22 | 1.3.5 | Project Charter Approval & Gate QG0 |  | 5d | 2026-05-19 | 2026-05-24 | 18, 19, 20, 21 | must start on 2026-05-19 | KPMG PMO Lead |
| 23 | 1.3.6 | QG0 - Initialization Quality Gate | milestone | 0d | 2026-05-24 | 2026-05-24 | 22 | must start on 2026-05-24 | KPMG PMO Lead; Buyer Sponsor |
| 24 | 2 | **Phase 1: Concept** |  | 65d | 2026-05-25 | 2026-07-29 |  |  |  |
| 25 | 2.1 | **1.1 Detailed As-Is Analysis** |  | 40d | 2026-05-25 | 2026-07-04 |  |  |  |
| 26 | 2.1.1 | Application Portfolio Deep Dive (LeanIX, 208 apps) |  | 20d | 2026-05-25 | 2026-06-14 | 9 | must start on 2026-05-25 | KPMG Data Architect; KPMG Infrastructure Architect |
| 27 | 2.1.2 | SAP Landscape Detailed Analysis |  | 20d | 2026-05-25 | 2026-06-14 | 11 | must start on 2026-05-25 | KPMG SAP Architect; RoboGmbH ERP Specialist |
| 28 | 2.1.3 | Infrastructure Detailed Mapping (37 sites, top 15 surveyed) |  | 20d | 2026-05-25 | 2026-06-14 | 10 | must start on 2026-05-25 | KPMG Infrastructure Architect; RoboGmbH IT Manager |
| 29 | 2.1.4 | Contract & Licence Final Inventory (208 apps) |  | 15d | 2026-06-08 | 2026-06-23 | 13 | must start on 2026-06-08 | RoboGmbH IT Manager |
| 30 | 2.1.5 | HR & Payroll System Separation (Multi-region) |  | 15d | 2026-06-10 | 2026-06-25 | 14 | must start on 2026-06-10 | KPMG Data Architect |

Notes:
- 1: Governance, legal, assessment baseline
- 2: PMO, steering, RACI
- 3: Resources: KPMG PMO Lead + KPMG Project Manager / Seller and Buyer sponsors appointed
- 4: Resources: KPMG PMO Lead / First steering committee session
- 5: Resources: KPMG Project Manager + KPMG PMO Lead / Approval of governance structure
- 6: Resources: KPMG PMO Lead / SharePoint site, project tracking active
- 7: Resources: KPMG PMO Lead + RoboGmbH IT Manager / All teams mobilized
- 8: Inventory, apps, infra, scope
- 9: Resources: KPMG Data Architect + RoboGmbH IT Manager / Packaging-specific apps; flag shared Bosch dependencies
- 10: Resources: RoboGmbH IT Manager + KPMG Infrastructure Architect / Site surveys top 15 locations; EMEA/APAC prioritized
- 11: Resources: KPMG SAP Architect + RoboGmbH ERP Specialist / Identify packaging-specific vs shared SAP; separation complexity
- 12: Resources: KPMG Data Architect / Data classification baseline
- 13: Resources: RoboGmbH IT Manager / Change of control review; FOSS compliance; ~3,500 device licences
- 14: Resources: KPMG Data Architect / Country-by-country HR rules (Germany, China, India, Mexico, etc.)
- 15: Resources: RoboGmbH IT Manager + KPMG Infrastructure Architect / Production systems; safety certifications; ICS/SCADA scope
- 16: Resources: KPMG Project Manager / Germany works council; China PIPL; India; Mexico SAT delays
- 17: Charter, approval, scope frozen
- 18: Resources: KPMG PMO Lead + KPMG Project Manager / Executive charter document
- 19: Resources: KPMG Project Manager + KPMG SAP Architect / Stand Alone model confirmed; no Merger Zone
- 20: Resources: KPMG PMO Lead + All Workstream Leads / First Make It Work; priorities set
- 21: Resources: KPMG Project Manager + RoboGmbH IT Manager / Bosch operates all IT until Day 1; TSA scope defined
- 22: Resources: KPMG PMO Lead / Charter signed; Phase 0 gate approval
- 23: Resources: KPMG PMO Lead + Buyer Sponsor / Charter approved; inventory confirmed; governance ready
- 24: Requirements, design strategy, baseline planning
- 25: Landscape detail, dependencies
- 26: Resources: KPMG Data Architect + KPMG Infrastructure Architect / Flag Bosch shared dependencies; categorize critical vs standard
- 27: Resources: KPMG SAP Architect + RoboGmbH ERP Specialist / Identify separation complexity; module scope
- 28: Resources: KPMG Infrastructure Architect + RoboGmbH IT Manager / WAN, LAN, co-lo, security topology
- 29: Resources: RoboGmbH IT Manager / Change of control clause review; vendor dependencies
- 30: Resources: KPMG Data Architect / Region-specific payroll rules finalized

| ID | WBS | Task | Type | Duration | Start | Finish | Predecessors | Constraint | Resources |
| --- | --- | --- | --- | --- | --- | --- | --- | --- | --- |
| 31 | 2.2 | **1.2 Stand-Alone Architecture Design Strategy** |  | 25d | 2026-05-31 | 2026-06-25 |  |  |  |
| 32 | 2.2.1 | Architecture Concept Workshop (Stand Alone approach) |  | 5d | 2026-05-31 | 2026-06-05 | 26 | must start on 2026-05-31 | KPMG SAP Architect; KPMG Infrastructure Architect |
| 33 | 2.2.2 | WAN & Network Architecture (37 sites) |  | 12d | 2026-06-15 | 2026-06-27 | 32, 28 | must start on 2026-06-15 | KPMG Infrastructure Architect; RoboGmbH IT Manager |
| 34 | 2.2.3 | Active Directory Design (New Forest) |  | 10d | 2026-06-15 | 2026-06-25 | 32 | must start on 2026-06-15 | KPMG Infrastructure Architect |
| 35 | 2.2.4 | M365 & Azure Tenant Design (3,500+ mailboxes) |  | 10d | 2026-06-15 | 2026-06-25 | 32 | must start on 2026-06-15 | KPMG Infrastructure Architect |
| 36 | 2.2.5 | Co-Location & Data Centre Selection (1-2 regional hubs) |  | 10d | 2026-05-31 | 2026-06-10 | 28 | must start on 2026-05-31 | RoboGmbH IT Manager |
| 37 | 2.2.6 | Security Architecture (NewCo Zebra independent) |  | 12d | 2026-06-20 | 2026-07-02 | 33, 34 | must start on 2026-06-20 | KPMG Infrastructure Architect |
| 38 | 2.2.7 | IAM & Identity Design (Decouple from Bosch) |  | 10d | 2026-06-20 | 2026-06-30 | 34 | must start on 2026-06-20 | KPMG Infrastructure Architect |
| 39 | 2.3 | **1.3 Zebra IT Migration Strategy** |  | 25d | 2026-06-15 | 2026-07-10 |  |  |  |
| 40 | 2.3.1 | ERP Migration Strategy Decision (Shell Copy vs Greenfield) |  | 12d | 2026-06-15 | 2026-06-27 | 27 | must start on 2026-06-15 | KPMG SAP Architect; RoboGmbH ERP Specialist |
| 41 | 2.3.2 | Application Categorization & Wave Planning (208 apps) |  | 12d | 2026-06-25 | 2026-07-07 | 26, 40 | must start on 2026-06-25 | KPMG Data Architect |
| 42 | 2.3.3 | Data Migration & Separation Strategy |  | 10d | 2026-06-30 | 2026-07-10 | 12, 27 | must start on 2026-06-30 | KPMG Data Architect; KPMG Data Engineer |
| 43 | 2.3.4 | TSA Service Catalogue Definition |  | 15d | 2026-06-25 | 2026-07-10 | 21, 32 | must start on 2026-06-25 | KPMG Project Manager; RoboGmbH IT Manager |
| 44 | 2.3.5 | Zebra Stand-Alone Operating Model (post-TSA) |  | 12d | 2026-07-05 | 2026-07-17 | 40, 41 | must start on 2026-07-05 | KPMG Infrastructure Architect |
| 45 | 2.4 | **1.4 Client Device & Workplace Strategy** |  | 12d | 2026-06-15 | 2026-06-27 |  |  |  |
| 46 | 2.4.1 | Client Device Inventory & Assessment (~3,500 devices) |  | 8d | 2026-06-15 | 2026-06-23 | 26 | must start on 2026-06-15 | KPMG Infrastructure Architect; RoboGmbH IT Manager |
| 47 | 2.4.2 | Client Migration Approach (Wave-based reimaging) |  | 8d | 2026-06-20 | 2026-06-28 | 46 | must start on 2026-06-20 | KPMG Infrastructure Architect |
| 48 | 2.5 | **1.5 Planning & Baseline** |  | 15d | 2026-07-10 | 2026-07-25 |  |  |  |
| 49 | 2.5.1 | Detailed Project Plan Development |  | 10d | 2026-07-10 | 2026-07-20 |  | must start on 2026-07-10 | KPMG PMO Lead; KPMG Project Manager |
| 50 | 2.5.2 | Risk Register Baseline (Initial risks) |  | 8d | 2026-07-10 | 2026-07-18 |  | must start on 2026-07-10 | KPMG Project Manager |
| 51 | 2.5.3 | OPL Establishment & Tracking |  | 5d | 2026-07-15 | 2026-07-20 | 49 | must start on 2026-07-15 | KPMG PMO Lead |
| 52 | 2.5.4 | Resource Plan & Budget Baseline |  | 8d | 2026-07-15 | 2026-07-23 | 49 | must start on 2026-07-15 | KPMG PMO Lead; KPMG Project Manager |
| 53 | 2.5.5 | QG1 - Concept Quality Gate | milestone | 0d | 2026-07-25 | 2026-07-25 | 49, 44, 43 | must start on 2026-07-25 | KPMG PMO Lead; Buyer Sponsor |
| 54 | 3 | **Phase 2: Architecture & Design** |  | 60d | 2026-07-26 | 2026-09-24 |  |  |  |
| 55 | 3.1 | **2.1 Infrastructure Design & Procurement** |  | 40d | 2026-07-26 | 2026-09-04 |  |  |  |
| 56 | 3.1.1 | WAN Provider Selection & Ordering (37 sites) |  | 15d | 2026-07-26 | 2026-08-10 | 33 | must start on 2026-07-26 | RoboGmbH IT Manager; KPMG Infrastructure Architect |
| 57 | 3.1.2 | Co-Location Data Centre Procurement (1-2 regional hubs) |  | 20d | 2026-07-26 | 2026-08-15 | 36 | must start on 2026-07-26 | RoboGmbH IT Manager |
| 58 | 3.1.3 | Active Directory Detailed Configuration |  | 20d | 2026-08-09 | 2026-08-29 | 56, 34 | must start on 2026-08-09 | KPMG Infrastructure Architect |
| 59 | 3.1.4 | M365 Tenant & Azure Configuration (3,500+ mailboxes) |  | 18d | 2026-08-14 | 2026-09-01 | 35, 56 | must start on 2026-08-14 | KPMG Infrastructure Architect |
| 60 | 3.1.5 | Security & Firewall Architecture Finalization |  | 18d | 2026-08-19 | 2026-09-06 | 37, 56 | must start on 2026-08-19 | KPMG Infrastructure Architect |
| 61 | 3.1.6 | IAM Platform & SSO Design |  | 15d | 2026-08-19 | 2026-09-03 | 38 | must start on 2026-08-19 | KPMG Infrastructure Architect |
| 62 | 3.1.7 | CMDB & ITSM Platform Design |  | 12d | 2026-08-24 | 2026-09-05 | 56, 58 | must start on 2026-08-24 | KPMG Infrastructure Architect |

Notes:
- 31: Architecture concept (no Merger Zone)
- 32: Resources: KPMG SAP Architect + KPMG Infrastructure Architect / Confirm Stand Alone; no Merger Zone; target architecture
- 33: Resources: KPMG Infrastructure Architect + RoboGmbH IT Manager / Hub-and-spoke model; 1-2 regional co-lo; 4-6 month lead time
- 34: Resources: KPMG Infrastructure Architect / New AD forest for Zebra; fully independent from Bosch
- 35: Resources: KPMG Infrastructure Architect / New M365 tenant; OneDrive, Teams in scope
- 36: Resources: RoboGmbH IT Manager / Primary hub selection; decision by QG1
- 37: Resources: KPMG Infrastructure Architect / Independent SOC; security baseline
- 38: Resources: KPMG Infrastructure Architect / New IAM platform; decouple from Bosch Saviynt
- 39: ERP, apps, clients, data
- 40: Resources: KPMG SAP Architect + RoboGmbH ERP Specialist / Shell copy benchmarked 9-12 months; decision by QG1
- 41: Resources: KPMG Data Architect / Wave 1 ~60 critical; Wave 2 ~80 standard; Wave 3 ~68 local/OT
- 42: Resources: KPMG Data Architect + KPMG Data Engineer / Non-selective approach; residual data in Bosch until TSA exit
- 43: Resources: KPMG Project Manager + RoboGmbH IT Manager / Catalogue all Bosch services Zebra requires; exit criteria per service
- 44: Resources: KPMG Infrastructure Architect / All services exit directly post-TSA; define operating model
- 45: 3,500+ device migration approach
- 46: Resources: KPMG Infrastructure Architect + RoboGmbH IT Manager / Device age, type, replacement plan for out-of-support
- 47: Resources: KPMG Infrastructure Architect / 3,500 devices across 37 sites; EMEA/APAC/Americas stagger
- 48: Schedule, budget, risk baseline
- 49: Resources: KPMG PMO Lead + KPMG Project Manager / Full phase schedule with dependencies
- 50: Resources: KPMG Project Manager / Risk identification and scoring
- 51: Resources: KPMG PMO Lead / Open Points List system active
- 52: Resources: KPMG PMO Lead + KPMG Project Manager / Labour and CAPEX baseline
- 53: Resources: KPMG PMO Lead + Buyer Sponsor / Architecture approved; ERP strategy decided; TSA catalogue signed; proceed to Design
- 54: Detailed design, vendor selection, architecture finalization
- 55: WAN, co-lo, AD, M365, security design
- 56: Resources: RoboGmbH IT Manager + KPMG Infrastructure Architect / Order immediately after design; 4-6 month lead time
- 57: Resources: RoboGmbH IT Manager / Primary EMEA co-locator for Zebra DC
- 58: Resources: KPMG Infrastructure Architect / New Zebra AD forest specifications; delegation model
- 59: Resources: KPMG Infrastructure Architect / Tenant isolation; licensing; governance
- 60: Resources: KPMG Infrastructure Architect / Network security, endpoint security, DLP policies
- 61: Resources: KPMG Infrastructure Architect / Identity governance, provisioning automation
- 62: Resources: KPMG Infrastructure Architect / ServiceNow or alternative ITSM platform configuration

| ID | WBS | Task | Type | Duration | Start | Finish | Predecessors | Constraint | Resources |
| --- | --- | --- | --- | --- | --- | --- | --- | --- | --- |
| 63 | 3.2 | **2.2 SAP & ERP Design** |  | 30d | 2026-07-26 | 2026-08-25 |  |  |  |
| 64 | 3.2.1 | SAP System Landscape Detail & Separation |  | 15d | 2026-07-26 | 2026-08-10 | 27 | must start on 2026-07-26 | KPMG SAP Architect; RoboGmbH ERP Specialist |
| 65 | 3.2.2 | SAP Shell Copy Detailed Approach & Timeline |  | 18d | 2026-08-04 | 2026-08-22 | 40, 64 | must start on 2026-08-04 | KPMG SAP Architect; KPMG SAP Build Lead |
| 66 | 3.2.3 | SAP Interfaces & Integration Design (APIs) |  | 15d | 2026-08-09 | 2026-08-24 | 64 | must start on 2026-08-09 | KPMG SAP Build Lead; KPMG Data Engineer |
| 67 | 3.2.4 | SAP Authorization & Security Design |  | 12d | 2026-08-14 | 2026-08-26 | 38, 64 | must start on 2026-08-14 | KPMG Infrastructure Architect |
| 68 | 3.2.5 | SAP Test Environment & Tools Selection |  | 10d | 2026-08-14 | 2026-08-24 | 65 | must start on 2026-08-14 | KPMG SAP Architect; RoboGmbH ERP Specialist |
| 69 | 3.3 | **2.3 Application Migration Design (208 apps)** |  | 25d | 2026-07-30 | 2026-08-24 |  |  |  |
| 70 | 3.3.1 | Application Wave Refinement & Dependencies |  | 12d | 2026-07-30 | 2026-08-11 | 41 | must start on 2026-07-30 | KPMG Data Architect |
| 71 | 3.3.2 | Application Package Development (Wave 1 critical ~60 apps) |  | 18d | 2026-08-07 | 2026-08-25 | 70 | must start on 2026-08-07 | KPMG Data Architect; KPMG Infrastructure Architect |
| 72 | 3.3.3 | Custom App Adaptation Design (Re-point to Zebra domain) |  | 15d | 2026-08-14 | 2026-08-29 | 71 | must start on 2026-08-14 | KPMG Data Architect |
| 73 | 3.4 | **2.4 Client Workplace Design & Imaging** |  | 15d | 2026-07-30 | 2026-08-14 |  |  |  |
| 74 | 3.4.1 | Standard Image Development (SCCM/Intune) |  | 12d | 2026-07-30 | 2026-08-11 | 47 | must start on 2026-07-30 | KPMG Infrastructure Architect |
| 75 | 3.4.2 | Regional Wave Plan (EMEA / APAC / Americas devices) |  | 8d | 2026-08-04 | 2026-08-12 | 47, 74 | must start on 2026-08-04 | KPMG Infrastructure Architect |
| 76 | 3.5 | **2.5 Cutover Strategy & TSA Finalization** |  | 25d | 2026-08-09 | 2026-09-03 |  |  |  |
| 77 | 3.5.1 | Detailed Cutover Plan (37 sites, 208 apps, SAP) |  | 18d | 2026-08-09 | 2026-08-27 | 41, 65 | must start on 2026-08-09 | KPMG Project Manager; KPMG SAP Architect |
| 78 | 3.5.2 | TSA Service Descriptions Final (All 37 sites) |  | 15d | 2026-08-14 | 2026-08-29 | 43 | must start on 2026-08-14 | KPMG Project Manager; RoboGmbH IT Manager |
| 79 | 3.5.3 | TSA SLA & KPI Framework |  | 10d | 2026-08-24 | 2026-09-03 | 78 | must start on 2026-08-24 | KPMG Project Manager |
| 80 | 3.5.4 | TSA Legal & Contracts Final Review |  | 12d | 2026-08-24 | 2026-09-05 | 78, 79 | must start on 2026-08-24 | KPMG Project Manager |
| 81 | 3.5.5 | QG2/3 - Design Quality Gate | milestone | 0d | 2026-09-06 | 2026-09-06 | 62, 68, 72, 75, 80 | must start on 2026-09-06 | KPMG PMO Lead; Buyer Sponsor |
| 82 | 4 | **Phase 3: Development, Build & Test** |  | 100d | 2026-09-07 | 2027-05-22 |  |  |  |
| 83 | 4.1 | **3.1 Infrastructure Build (37 sites)** |  | 60d | 2026-09-07 | 2026-11-06 |  |  |  |
| 84 | 4.1.1 | WAN Circuits Delivery (EMEA batch 1, ~8 sites) |  | 25d | 2026-09-07 | 2026-10-02 | 56 | must start on 2026-09-07 | RoboGmbH IT Manager; KPMG Infrastructure Architect |
| 85 | 4.1.2 | WAN Circuits Delivery (APAC batch 1, ~6 sites) |  | 25d | 2026-09-07 | 2026-10-02 | 56 | must start on 2026-09-07 | RoboGmbH IT Manager; KPMG Infrastructure Architect |
| 86 | 4.1.3 | WAN Circuits Delivery (Americas batch 1, ~4-5 sites) |  | 25d | 2026-09-07 | 2026-10-02 | 56 | must start on 2026-09-07 | RoboGmbH IT Manager; KPMG Infrastructure Architect |
| 87 | 4.1.4 | Co-Location DC Setup & Testing |  | 30d | 2026-09-07 | 2026-10-07 | 57 | must start on 2026-09-07 | RoboGmbH IT Manager; KPMG Infrastructure Architect |
| 88 | 4.1.5 | Active Directory Build & User Provisioning |  | 30d | 2026-09-28 | 2026-10-28 | 58, 84 | must start on 2026-09-28 | KPMG Infrastructure Architect |
| 89 | 4.1.6 | M365 Tenant & Azure Production Build |  | 25d | 2026-10-03 | 2026-10-28 | 59, 87 | must start on 2026-10-03 | KPMG Infrastructure Architect |
| 90 | 4.1.7 | Security & Firewall Implementation |  | 25d | 2026-10-08 | 2026-11-02 | 60, 84 | must start on 2026-10-08 | KPMG Infrastructure Architect |
| 91 | 4.1.8 | IAM Platform Deployment & User Sync |  | 25d | 2026-10-03 | 2026-10-28 | 61, 88 | must start on 2026-10-03 | KPMG Infrastructure Architect |
| 92 | 4.1.9 | CMDB & ITSM Platform Setup (Assets, CIs) |  | 20d | 2026-10-23 | 2026-11-12 | 62, 88 | must start on 2026-10-23 | KPMG Infrastructure Architect |
| 93 | 4.1.10 | Telephony Platform Setup & Number Porting (37 sites) |  | 20d | 2026-10-28 | 2026-11-17 | 87 | must start on 2026-10-28 | RoboGmbH IT Manager |
| 94 | 4.1.11 | File Share Infrastructure & User Documents |  | 18d | 2026-10-23 | 2026-11-10 | 87, 89 | must start on 2026-10-23 | KPMG Infrastructure Architect |
| 95 | 4.1.12 | Backup & Disaster Recovery Setup |  | 15d | 2026-11-02 | 2026-11-17 | 87 | must start on 2026-11-02 | KPMG Infrastructure Architect |

Notes:
- 63: Shell copy prep, interfaces, auth design
- 64: Resources: KPMG SAP Architect + RoboGmbH ERP Specialist / Module scope for Zebra packaging
- 65: Resources: KPMG SAP Architect + KPMG SAP Build Lead / Extraction approach; timeline; re-configuration items
- 66: Resources: KPMG SAP Build Lead + KPMG Data Engineer / Identify all inbound/outbound interfaces; EDI approach
- 67: Resources: KPMG Infrastructure Architect / User roles; segregation of duties; authorization matrix
- 68: Resources: KPMG SAP Architect + RoboGmbH ERP Specialist / SIT, UAT environment specifications; performance testing tools
- 69: Wave definition, packaging, integration strategy
- 70: Resources: KPMG Data Architect / Wave 1/2/3 app list finalized; cross-wave dependencies
- 71: Resources: KPMG Data Architect + KPMG Infrastructure Architect / Deployment package; configuration; cutover script
- 72: Resources: KPMG Data Architect / Domain, AD, M365, ITSM configuration changes
- 73: Device imaging, wave plan
- 74: Resources: KPMG Infrastructure Architect / Standard image for Zebra domain; hardware refresh plan
- 75: Resources: KPMG Infrastructure Architect / Wave sequencing; logistics; regional priorities
- 76: Go-live plan, TSA contracts
- 77: Resources: KPMG Project Manager + KPMG SAP Architect / Parallel run approach; rollback plan; timing sequence
- 78: Resources: KPMG Project Manager + RoboGmbH IT Manager / Each TSA service line; exit date; acceptance criteria
- 79: Resources: KPMG Project Manager / SLA levels; reporting cadence
- 80: Resources: KPMG Project Manager / Contract finalization and signature readiness
- 81: Resources: KPMG PMO Lead + Buyer Sponsor / Infrastructure designed; ERP designed; apps packaged; devices planned; TSA approved; proceed to Build
- 82: Infrastructure build, ERP setup, app prep, testing
- 83: WAN, co-lo, AD, M365, security, operations setup
- 84: Resources: RoboGmbH IT Manager + KPMG Infrastructure Architect / 4-6 month lead completed; circuit testing
- 85: Resources: RoboGmbH IT Manager + KPMG Infrastructure Architect / China local provider; stagger by country
- 86: Resources: RoboGmbH IT Manager + KPMG Infrastructure Architect / Mexico legal entity confirmed before delivery
- 87: Resources: RoboGmbH IT Manager + KPMG Infrastructure Architect / Cooling, power, connectivity; Zebra servers racked
- 88: Resources: KPMG Infrastructure Architect / All 3,500+ users and app access configured
- 89: Resources: KPMG Infrastructure Architect / 3,500+ mailboxes provisioned; OneDrive structure built
- 90: Resources: KPMG Infrastructure Architect / Security appliances; DLP; endpoint protection
- 91: Resources: KPMG Infrastructure Architect / SSO, provisioning automation for 3,500+ users
- 92: Resources: KPMG Infrastructure Architect / Asset inventory; service catalogue; incident management
- 93: Resources: RoboGmbH IT Manager / Phone system config; 4-8 weeks per operator per site
- 94: Resources: KPMG Infrastructure Architect / NAS/Cloud setup for 3,500+ users; shared directories
- 95: Resources: KPMG Infrastructure Architect / Backup solution; RTO/RPO targets defined

| ID | WBS | Task | Duration | Start | Finish | Predecessors | Constraint | Resources |
| --- | --- | --- | --- | --- | --- | --- | --- | --- |
| 96 | 4.2 | **3.2 SAP & ERP Development** | 70d | 2026-09-07 | 2026-11-16 |  |  |  |
| 97 | 4.2.1 | SAP System Landscape Build (Zebra-specific modules) | 20d | 2026-09-07 | 2026-09-27 | 64 | must start on 2026-09-07 | KPMG SAP Architect; KPMG SAP Build Lead; RoboGmbH ERP Specialist |
| 98 | 4.2.2 | SAP Shell Copy Data Extraction & Preparation | 25d | 2026-09-18 | 2026-10-13 | 97 | must start on 2026-09-18 | KPMG SAP Build Lead; RoboGmbH ERP Specialist |
| 99 | 4.2.3 | Data Migration Dry Run 1 (Test) | 15d | 2026-09-28 | 2026-10-13 | 98 | must start on 2026-09-28 | KPMG Data Engineer; RoboGmbH ERP Specialist |
| 100 | 4.2.4 | Data Migration Dry Run 2 (Refinement) | 15d | 2026-10-13 | 2026-10-28 | 99 | must start on 2026-10-13 | KPMG Data Engineer; RoboGmbH ERP Specialist |
| 101 | 4.2.5 | SAP Interfaces & Integration Development | 25d | 2026-10-03 | 2026-10-28 | 66, 98 | must start on 2026-10-03 | KPMG SAP Build Lead; KPMG Data Engineer |
| 102 | 4.2.6 | SAP Authorization & Security Hardening | 15d | 2026-10-18 | 2026-11-02 | 67, 101 | must start on 2026-10-18 | KPMG Infrastructure Architect |
| 103 | 4.2.7 | SAP Test Environment Build (SIT ready) | 20d | 2026-10-13 | 2026-11-02 | 68, 98, 101 | must start on 2026-10-13 | KPMG SAP Architect; RoboGmbH ERP Specialist |
| 104 | 4.3 | **3.3 Application Migration Preparation (208 apps)** | 60d | 2026-09-07 | 2026-11-06 |  |  |  |
| 105 | 4.3.1 | Wave 1 Application Packaging (Critical ~60 apps) | 25d | 2026-09-07 | 2026-10-02 | 71 | must start on 2026-09-07 | KPMG Data Architect; KPMG Infrastructure Architect |
| 106 | 4.3.2 | Wave 2 Application Packaging (Standard ~80 apps) | 25d | 2026-09-28 | 2026-10-23 | 70 | must start on 2026-09-28 | KPMG Data Architect; KPMG Infrastructure Architect |
| 107 | 4.3.3 | Wave 3 Application Packaging (Local/OT ~68 apps) | 20d | 2026-10-13 | 2026-11-02 | 70 | must start on 2026-10-13 | KPMG Data Architect; KPMG Infrastructure Architect |
| 108 | 4.3.4 | Custom Application Adaptation for Zebra Environment | 25d | 2026-09-28 | 2026-10-23 | 72, 88 | must start on 2026-09-28 | KPMG Data Architect; RoboGmbH IT Manager |
| 109 | 4.3.5 | Application Integration Development (APIs, Data mapping) | 20d | 2026-10-08 | 2026-10-28 | 66, 101 | must start on 2026-10-08 | KPMG Data Engineer; KPMG SAP Build Lead |
| 110 | 4.3.6 | Application Integration Testing Prep | 15d | 2026-10-23 | 2026-11-07 | 105, 108, 109 | must start on 2026-10-23 | KPMG Infrastructure Architect; KPMG Test Specialist |
| 111 | 4.4 | **3.4 Client Workplace, Device & M365 Migration (ALL PRE-GoLive)** | 100d | 2026-09-07 | 2027-05-24 |  |  |  |
| 112 | 4.4.1 | SCCM / Intune Configuration (Standard image) | 20d | 2026-09-07 | 2026-09-27 | 74 | must start on 2026-09-07 | KPMG Infrastructure Architect |
| 113 | 4.4.2 | Device Imaging & Standard OS Build | 20d | 2026-09-18 | 2026-10-08 | 74, 112 | must start on 2026-09-18 | KPMG Infrastructure Architect |
| 114 | 4.4.3 | Regional Wave Preparation (EMEA / APAC / Americas logistics) | 15d | 2026-09-28 | 2026-10-13 | 75, 113 | must start on 2026-09-28 | KPMG Infrastructure Architect; RoboGmbH IT Manager |
| 115 | 4.4.4 | User Profile & OneDrive Migration Tooling (Setup) | 12d | 2026-10-13 | 2026-10-25 | 89, 113 | must start on 2026-10-13 | KPMG Infrastructure Architect |
| 116 | 4.4.5 | Device Migration Wave 1 (EMEA hub sites, ~500 devices) | 8d | 2026-10-18 | 2026-10-26 | 113, 114 | must start on 2026-10-18 | KPMG Infrastructure Architect; RoboGmbH IT Manager |
| 117 | 4.4.6 | Device Migration Wave 2 (APAC sites, ~700 devices) | 8d | 2026-10-21 | 2026-10-29 | 114, 113 | must start on 2026-10-21 | KPMG Infrastructure Architect; RoboGmbH IT Manager |
| 118 | 4.4.7 | Device Migration Wave 3 (EMEA remaining, ~300 devices) | 8d | 2026-10-26 | 2026-11-03 | 116 | must start on 2026-10-26 | KPMG Infrastructure Architect; RoboGmbH IT Manager |
| 119 | 4.4.8 | Device Migration Wave 4 (Americas, ~500 devices) | 8d | 2026-10-28 | 2026-11-05 | 117 | must start on 2026-10-28 | KPMG Infrastructure Architect; RoboGmbH IT Manager |
| 120 | 4.4.9 | Device Migration Wave 5 (Remaining & exceptions, ~400 devices) | 8d | 2026-11-02 | 2027-05-22 | 118, 119 | must start on 2026-11-02 | KPMG Infrastructure Architect |
| 121 | 4.4.10 | M365 Mailbox & OneDrive Migration (3,500+ users — ALL PRE-GoLive) | 30d | 2026-10-08 | 2027-05-22 | 89, 115 | must start on 2026-10-08 | KPMG Infrastructure Architect |

Notes:
- 96: Shell copy, build, interfaces, auth, testing
- 97: Resources: KPMG SAP Architect + KPMG SAP Build Lead + RoboGmbH ERP Specialist / Base system build; module activation
- 98: Resources: KPMG SAP Build Lead + RoboGmbH ERP Specialist / Master data cleanup; extraction from Bosch SAP
- 99: Resources: KPMG Data Engineer + RoboGmbH ERP Specialist / Extract, transform, load; validation
- 100: Resources: KPMG Data Engineer + RoboGmbH ERP Specialist / Fix issues from Dry Run 1
- 101: Resources: KPMG SAP Build Lead + KPMG Data Engineer / APIs, EDI mappings, middleware configuration
- 102: Resources: KPMG Infrastructure Architect / User role assignments; access control verification
- 103: Resources: KPMG SAP Architect + RoboGmbH ERP Specialist / SIT/UAT environment ready for integration testing
- 104: Wave packages, custom adaptation, integration test prep
- 105: Resources: KPMG Data Architect + KPMG Infrastructure Architect / Deployment packages; configuration parameters
- 106: Resources: KPMG Data Architect + KPMG Infrastructure Architect / packaging during Wave 1 execution prep
- 107: Resources: KPMG Data Architect + KPMG Infrastructure Architect / Regional and OT-specific apps
- 108: Resources: KPMG Data Architect + RoboGmbH IT Manager / Domain re-point, AD, M365, ITSM integration
- 109: Resources: KPMG Data Engineer + KPMG SAP Build Lead / Cross-app and SAP integration development
- 110: Resources: KPMG Infrastructure Architect + KPMG Test Specialist / Test scenario prep; test data setup
- 111: Device imaging, all 5 migration waves, M365 mailbox migration ALL before QG4
- 112: Resources: KPMG Infrastructure Architect / Device management platform setup
- 113: Resources: KPMG Infrastructure Architect / Standard image production; imaging tooling
- 114: Resources: KPMG Infrastructure Architect + RoboGmbH IT Manager / Imaging schedule; regional IT team coordination
- 115: Resources: KPMG Infrastructure Architect / Migration tools for user data; setup & testing
- 116: Resources: KPMG Infrastructure Architect + RoboGmbH IT Manager / First regional wave; EMEA priority (pre-GoLive)
- 117: Resources: KPMG Infrastructure Architect + RoboGmbH IT Manager / Parallel with Wave 1; China coordination (pre-GoLive)
- 118: Resources: KPMG Infrastructure Architect + RoboGmbH IT Manager / Remaining EMEA sites (pre-GoLive)
- 119: Resources: KPMG Infrastructure Architect + RoboGmbH IT Manager / Americas sites (pre-GoLive)
- 120: Resources: KPMG Infrastructure Architect / Stragglers, replacements before GoLive (pre-GoLive)
- 121: Resources: KPMG Infrastructure Architect / Batched user mailbox & OneDrive migration BEFORE GoLive so users ready Day 1

| ID | WBS | Task | Type | Duration | Start | Finish | Predecessors | Constraint | Resources |
| --- | --- | --- | --- | --- | --- | --- | --- | --- | --- |
| 122 | 4.5 | **3.5 System Integration Testing & UAT** |  | 50d | 2026-10-13 | 2027-05-22 |  |  |  |
| 123 | 4.5.1 | SAP System Integration Test 1 (SIT1) |  | 20d | 2026-10-13 | 2026-11-02 | 103 | must start on 2026-10-13 | KPMG SAP Specialist; KPMG Test Specialist; RoboGmbH ERP Specialist |
| 124 | 4.5.2 | Application Integration Testing (Wave 1 + SAP) |  | 18d | 2026-10-23 | 2026-11-10 | 110, 123 | must start on 2026-10-23 | KPMG Test Specialist; KPMG Data Architect |
| 125 | 4.5.3 | User Acceptance Testing (Business owners, 37 sites) |  | 25d | 2026-11-02 | 2027-05-17 | 124 | must start on 2026-11-02 | KPMG QA Lead; KPMG Test Specialist; RoboGmbH IT Manager |
| 126 | 4.5.4 | Dress Rehearsal & Cutover Simulation |  | 8d | 2027-05-17 | 2027-05-24 | 125 | must start on 2027-05-17 | KPMG Project Manager; KPMG SAP Build Lead; KPMG Test Specialist |
| 127 | 4.5.5 | Ready for QG4 Gate Review | milestone | 0d | 2027-05-24 | 2027-05-24 | 120, 121, 126 | must start on 2027-05-24 | KPMG PMO Lead |
| 128 | 5 | **Phase 4: GoLive & Closure** |  | 60d | 2027-06-01 | 2027-09-14 |  |  |  |
| 129 | 5.1 | **4.1 GoLive Day 1 Activities** |  | 7d | 2027-06-01 | 2027-06-08 |  |  |  |
| 130 | 5.1.1 | Final Data Load & Production Cutover |  | 3d | 2027-06-01 | 2027-06-04 | 127 | must start on 2027-06-01 | KPMG Data Engineer; KPMG SAP Build Lead; RoboGmbH ERP Specialist |
| 131 | 5.1.2 | SAP Go-Live Activation |  | 2d | 2027-06-01 | 2027-06-03 | 130 | must start on 2027-06-01 | KPMG SAP Specialist; RoboGmbH ERP Specialist |
| 132 | 5.1.3 | Application Go-Live Activation (Wave 1, 60 apps) |  | 2d | 2027-06-01 | 2027-06-03 | 130 | must start on 2027-06-01 | KPMG Infrastructure Architect; RoboGmbH IT Manager |
| 133 | 5.1.4 | Network & Domain Cutover (All 37 sites) |  | 2d | 2027-06-01 | 2027-06-03 | 130 | must start on 2027-06-01 | KPMG Infrastructure Architect; RoboGmbH IT Manager |
| 134 | 5.1.5 | Help Desk 24x7 Activation |  | 1d | 2027-06-01 | 2027-06-01 | 127 | must start on 2027-06-01 | RoboGmbH IT Manager; KPMG Test Specialist |
| 135 | 5.1.6 | GoLive Day 1 Milestone | milestone | 0d | 2027-06-01 | 2027-06-01 | 131, 132, 133 | must start on 2027-06-01 | KPMG PMO Lead; Buyer Sponsor |
| 136 | 5.2 | **4.2 Hypercare & Stabilization (90 days)** |  | 90d | 2027-06-02 | 2027-08-30 |  |  |  |
| 137 | 5.2.1 | Daily Operations Standups & Issue Management |  | 90d | 2027-06-02 | 2027-08-30 | 135 | must start on 2027-06-02 | KPMG Project Manager; RoboGmbH IT Manager |
| 138 | 5.2.2 | Performance Monitoring & Optimization |  | 90d | 2027-06-02 | 2027-08-30 | 135 | must start on 2027-06-02 | KPMG Infrastructure Architect; RoboGmbH IT Manager |
| 139 | 5.2.3 | Data Integrity & Reconciliation (Bosch to Zebra) |  | 20d | 2027-06-02 | 2027-06-22 | 135 | must start on 2027-06-02 | KPMG Data Engineer; RoboGmbH ERP Specialist |
| 140 | 5.2.4 | Issue Backlog & Prioritized Fix List |  | 60d | 2027-06-11 | 2027-08-10 | 137 | must start on 2027-06-11 | KPMG Test Specialist; RoboGmbH IT Manager |
| 141 | 5.2.5 | Wave 2 Application Go-Live (80 standard apps) |  | 5d | 2027-06-21 | 2027-06-26 | 137 | must start on 2027-06-21 | KPMG Infrastructure Architect |
| 142 | 5.2.6 | Wave 3 Application Go-Live (68 local/OT apps) |  | 3d | 2027-07-21 | 2027-07-24 | 141 | must start on 2027-07-21 | KPMG Infrastructure Architect |
| 143 | 5.2.7 | Hypercare Close-Out Sign-Off | milestone | 0d | 2027-08-30 | 2027-08-30 | 137, 138, 139, 140, 142 | must start on 2027-08-30 | KPMG PMO Lead; Buyer Sponsor |
| 144 | 5.3 | **4.3 TSA Transition & Service Exit** |  | 30d | 2027-08-31 | 2027-09-30 |  |  |  |
| 145 | 5.3.1 | TSA Exit Planning per Service Line |  | 10d | 2027-08-31 | 2027-09-10 | 143 | must start on 2027-08-31 | KPMG Project Manager; RoboGmbH IT Manager |
| 146 | 5.3.2 | TSA Infrastructure Services Exit (Wave 1) |  | 15d | 2027-09-10 | 2027-09-25 | 145 | must start on 2027-09-10 | KPMG Infrastructure Architect; RoboGmbH IT Manager |
| 147 | 5.3.3 | TSA Application & ERP Services Exit (Wave 2) |  | 10d | 2027-09-19 | 2027-09-29 | 146 | must start on 2027-09-19 | KPMG SAP Specialist; RoboGmbH IT Manager |
| 148 | 5.3.4 | TSA Exit Confirmation (Bosch services fully terminated) | milestone | 0d | 2027-09-30 | 2027-09-30 | 147 | must start on 2027-09-30 | KPMG PMO Lead; Buyer Sponsor |

Notes:
- 122: SIT, integration tests, UAT
- 123: Resources: KPMG SAP Specialist + KPMG Test Specialist + RoboGmbH ERP Specialist / Integration of apps + SAP; validation
- 124: Resources: KPMG Test Specialist + KPMG Data Architect / End-to-end Wave 1 app integration
- 125: Resources: KPMG QA Lead + KPMG Test Specialist + RoboGmbH IT Manager / Sign-off on functional & SAP transactions; regional testers; device reimaging validation
- 126: Resources: KPMG Project Manager + KPMG SAP Build Lead + KPMG Test Specialist / Full dry-run with rollback; issue log closeout; migration validation
- 127: Resources: KPMG PMO Lead / All infrastructure, SAP, apps ready; 3,500 devices reimaged & migrated; 3,500 mailboxes migrated; UAT passed; dress rehearsal successful
- 128: Cutover, hypercare, TSA exit, closure
- 129: Final data load, cutover execution, activation
- 130: Resources: KPMG Data Engineer + KPMG SAP Build Lead + RoboGmbH ERP Specialist / Final shell copy data load; integrity validation
- 131: Resources: KPMG SAP Specialist + RoboGmbH ERP Specialist / SAP production activation for Zebra
- 132: Resources: KPMG Infrastructure Architect + RoboGmbH IT Manager / Apps cut to production; validation
- 133: Resources: KPMG Infrastructure Architect + RoboGmbH IT Manager / AD cutover, DNS, WAN routing activation
- 134: Resources: RoboGmbH IT Manager + KPMG Test Specialist / Multi-region support live for 3,500 reimaged+migrated users (all devices ready pre-GoLive)
- 135: Resources: KPMG PMO Lead + Buyer Sponsor / Zebra business live on independent IT systems (all devices reimaged, all mailboxes migrated PRE-GoLive); TSA support begins
- 136: 24x7 support, stabilization, issue resolution; NO migrations post-GoLive
- 137: Resources: KPMG Project Manager + RoboGmbH IT Manager / Regional EMEA/APAC/Americas standups; P1/P2 hotline
- 138: Resources: KPMG Infrastructure Architect + RoboGmbH IT Manager / System performance tuning; infrastructure adjustments
- 139: Resources: KPMG Data Engineer + RoboGmbH ERP Specialist / Verify all data migrated correctly; fix reconciliation items
- 140: Resources: KPMG Test Specialist + RoboGmbH IT Manager / Capture, prioritize, deploy hotfixes; spans hypercare period
- 141: Resources: KPMG Infrastructure Architect / Phased app activation after Wave 1 stabilization
- 142: Resources: KPMG Infrastructure Architect / Final app activation; OT system go-live within hypercare window
- 143: Resources: KPMG PMO Lead + Buyer Sponsor / Hypercare period officially closed (90 days complete); transition to steady state
- 144: TSA service wave exit; handover to Zebra IT (after hypercare closes)
- 145: Resources: KPMG Project Manager + RoboGmbH IT Manager / Define exit criteria; acceptance tests per service
- 146: Resources: KPMG Infrastructure Architect + RoboGmbH IT Manager / Network, data centre, security handoff
- 147: Resources: KPMG SAP Specialist + RoboGmbH IT Manager / SAP, apps, integration handoff
- 148: Resources: KPMG PMO Lead + Buyer Sponsor / All TSA services exited; Zebra IT fully independent

| ID | WBS | Task | Type | Duration | Start | Finish | Predecessors | Constraint | Resources |
| --- | --- | --- | --- | --- | --- | --- | --- | --- | --- |
| 149 | 5.4 | **4.4 Programme Closure** |  | 15d | 2027-08-31 | 2027-09-14 |  |  |  |
| 150 | 5.4.1 | Lessons Learned Workshop (All regions) |  | 5d | 2027-08-31 | 2027-09-05 | 143 | must start on 2027-08-31 | KPMG PMO Lead; All Workstream Leads |
| 151 | 5.4.2 | Programme Closure Report & Knowledge Transfer |  | 8d | 2027-09-06 | 2027-09-13 | 150 | must start on 2027-09-06 | KPMG PMO Lead; KPMG Project Manager |
| 152 | 5.4.3 | Financial Reconciliation & Archive |  | 10d | 2027-08-31 | 2027-09-10 | 143 | must start on 2027-08-31 | KPMG PMO Lead |
| 153 | 5.4.4 | QG5 - Programme Closure Gate | milestone | 0d | 2027-09-14 | 2027-09-14 | 150, 151, 152, 148 | must start on 2027-09-14 | KPMG PMO Lead; Buyer Sponsor |
| 154 | 5.5 | Project Completion | milestone | 0d | 2027-09-14 | 2027-09-14 | 153 | must start on 2027-09-14 |  |

Notes:
- 149: Lessons learned, archive, final sign-off
- 150: Resources: KPMG PMO Lead + All Workstream Leads / Debrief; best practices; challenges documented
- 151: Resources: KPMG PMO Lead + KPMG Project Manager / Final report; operational runbooks; team debrief
- 152: Resources: KPMG PMO Lead / Finance closeout; CAPEX/labour final reconciliation
- 153: Resources: KPMG PMO Lead + Buyer Sponsor / Hypercare closed (90 days); TSA fully exited; Zebra IT independent; programme formally closed
- 154: All artifacts archived; final sign-off
